# Création d'entreprise

Schedule from MS Project, 2022-12-14 to 2023-06-05, 7 hours a day.

## Calendars

- Standard: Mon-Fri 09:00-12:00, 14:00-18:00; Sat-Sun off.

## Resources

| Resource |
| --- |
| Conseiller économique |
| Connaissances |
| Avocat |
| Organisme gouvernemental |
| Direction |
| Propriétaires |
| Comptable |
| Banquier |
| Services d'informations |

## Schedule

| ID | WBS | Task | Type | Duration | Start | Finish | Predecessors | Total slack | Free slack | Resources | Work |
| --- | --- | --- | --- | --- | --- | --- | --- | --- | --- | --- | --- |
| 1 | 1 | **Phase 1 - Plan stratégique** |  | 23d | 2022-12-14 | 2023-01-13 |  | 0d |  |  | 210h |
| 2 | 1.1 | **Auto-évaluation** |  | 3d | 2022-12-14 | 2022-12-16 |  | 0d |  |  | 28h |
| 3 | 1.1.1 | Définition de la vision de l'entreprise |  | 1d | 2022-12-14 | 2022-12-14 |  | 0d |  | Direction | 7h |
| 4 | 1.1.2 | Identification des compétences, des informations et des supports disponibles |  | 1d | 2022-12-15 | 2022-12-15 | 3 | 0d |  | Conseiller économique; Direction | 14h |
| 5 | 1.1.3 | Décision de poursuite du projet |  | 1d | 2022-12-16 | 2022-12-16 | 4 | 0d |  | Direction | 7h |
| 6 | 1.2 | **Définition des opportunités** |  | 10d | 2022-12-19 | 2022-12-30 |  | 0d |  |  | 84h |
| 7 | 1.2.1 | Recherche sur le marché et la concurrence |  | 1d | 2022-12-19 | 2022-12-19 | 5 | 0d |  | Conseiller économique | 7h |
| 8 | 1.2.2 | Interview des propriétaires d'entreprises similaires |  | 5d | 2022-12-20 | 2022-12-26 | 7 | 0d |  | Propriétaires | 35h |
| 9 | 1.2.3 | Identification des ressources nécessaires |  | 2d | 2022-12-27 | 2022-12-28 | 8 | 0d |  | Conseiller économique; Connaissances | 28h |
| 10 | 1.2.4 | Identification des éléments de coût d'exploitation |  | 2d | 2022-12-29 | 2022-12-30 | 9 | 0d |  | Comptable | 14h |
| 11 | 1.3 | **Évaluation de l'approche de l'entreprise** |  | 4d | 2023-01-02 | 2023-01-05 |  | 0d |  |  | 28h |
| 12 | 1.3.1 | Définition des impératifs de la nouvelle entité |  | 1d | 2023-01-02 | 2023-01-02 | 10 | 0d |  | Direction | 7h |
| 13 | 1.3.2 | Identification des opportunités d'achat d'entreprises existantes |  | 1d | 2023-01-03 | 2023-01-03 | 12 | 0d |  | Direction | 7h |
| 14 | 1.3.3 | Recherche de possibilités de franchise |  | 1d | 2023-01-04 | 2023-01-04 | 13 | 0d |  | Direction | 7h |
| 15 | 1.3.4 | Résumé de l'approche de l'entreprise |  | 1d | 2023-01-05 | 2023-01-05 | 14 | 0d |  | Direction | 7h |
| 16 | 1.4 | **Évaluation des risques et bénéfices potentiels** |  | 7d | 2023-01-03 | 2023-01-11 |  | 3d |  |  | 70h |
| 17 | 1.4.1 | Estimation de la taille et de la stabilité du marché |  | 2d | 2023-01-03 | 2023-01-04 | 12 | 104d | 0d | Conseiller économique | 14h |
| 18 | 1.4.2 | Estimation de la concurrence |  | 1d | 2023-01-05 | 2023-01-05 | 17 | 104d | 0d | Conseiller économique | 7h |
| 19 | 1.4.3 | Estimation de la disponibilité des ressources nécessaires |  | 2d | 2023-01-06 | 2023-01-09 | 18 | 104d | 0d | Conseiller économique | 14h |
| 20 | 1.4.4 | Évaluation réaliste des parts de marché initiales |  | 1d | 2023-01-10 | 2023-01-10 | 19 | 104d |  | Conseiller économique | 7h |
| 21 | 1.4.5 | Détermination des impératifs financiers |  | 2d | 2023-01-06 | 2023-01-09 | 15 | 0d |  | Conseiller économique | 14h |
| 22 | 1.4.6 | Examen des aptitudes personnelles |  | 1d | 2023-01-10 | 2023-01-10 | 21 | 0d |  | Direction | 7h |
| 23 | 1.4.7 | Évaluation de la rentabilité initiale |  | 1d | 2023-01-11 | 2023-01-11 | 22 | 0d |  | Direction | 7h |
| 24 | 1.5 | Examen et modifications du plan stratégique |  | 2d | 2023-01-12 | 2023-01-13 | 23 | 0d |  |  |  |
| 25 | 1.6 | Confirmation de la décision de poursuite du projet | milestone | 0d | 2023-01-13 | 2023-01-13 | 24 | 0d |  |  |  |

| ID | WBS | Task | Type | Duration | Start | Finish | Predecessors | Total slack | Resources | Work |
| --- | --- | --- | --- | --- | --- | --- | --- | --- | --- | --- |
| 26 | 2 | **Phase 2 - Définition des opportunités de l'entreprise** |  | 27d | 2023-01-16 | 2023-02-21 |  | 0d |  | 182h |
| 27 | 2.1 | **Définition du marché** |  | 13d | 2023-01-16 | 2023-02-01 |  | 0d |  | 91h |
| 28 | 2.1.1 | Obtention des informations disponibles |  | 1d | 2023-01-16 | 2023-01-16 | 25 | 0d | Conseiller économique | 7h |
| 29 | 2.1.2 | Création d'un plan d'analyse du marché |  | 2d | 2023-01-17 | 2023-01-18 | 28 | 0d | Conseiller économique | 14h |
| 30 | 2.1.3 | Exécution du plan d'analyse du marché |  | 5d | 2023-01-19 | 2023-01-25 | 29 | 0d | Conseiller économique | 35h |
| 31 | 2.1.4 | Identification de la concurrence |  | 2d | 2023-01-26 | 2023-01-27 | 30 | 0d | Conseiller économique | 14h |
| 32 | 2.1.5 | Synthèse du marché |  | 2d | 2023-01-30 | 2023-01-31 | 31 | 0d | Conseiller économique | 14h |
| 33 | 2.1.6 | Identification du créneau du marché cible |  | 1d | 2023-02-01 | 2023-02-01 | 32 | 0d | Conseiller économique | 7h |
| 34 | 2.2 | **Identification des matériaux et fournitures nécessaires** |  | 7d | 2023-02-02 | 2023-02-10 |  | 0d |  | 49h |
| 35 | 2.2.1 | Sélection d'une approche d'entreprise (d'après "Évaluation de l'approche de l'entreprise" ci-dessus) |  | 2d | 2023-02-02 | 2023-02-03 | 28SS, 33 | 0d | Direction | 14h |
| 36 | 2.2.2 | Identification des ressources de personnel de direction |  | 1d | 2023-02-06 | 2023-02-06 | 35 | 0d | Direction | 7h |
| 37 | 2.2.3 | Identification des impératifs de personnel |  | 1d | 2023-02-07 | 2023-02-07 | 36 | 0d | Direction | 7h |
| 38 | 2.2.4 | Identification des matières premières nécessaires |  | 1d | 2023-02-08 | 2023-02-08 | 37 | 0d | Direction | 7h |
| 39 | 2.2.5 | Identification des commodités nécessaires |  | 1d | 2023-02-09 | 2023-02-09 | 38 | 0d | Direction | 7h |
| 40 | 2.2.6 | Résumé des coûts d'exploitation et des projections financières |  | 1d | 2023-02-10 | 2023-02-10 | 39 | 0d | Direction | 7h |
| 41 | 2.3 | **Évaluation des risques et bénéfices potentiels** |  | 6d | 2023-02-13 | 2023-02-20 |  | 0d |  | 42h |
| 42 | 2.3.1 | Estimation de la taille et de la stabilité du marché |  | 2d | 2023-02-13 | 2023-02-14 | 40 | 0d | Direction | 14h |
| 43 | 2.3.2 | Estimation de la disponibilité des ressources nécessaires |  | 2d | 2023-02-15 | 2023-02-16 | 42 | 0d | Direction | 14h |
| 44 | 2.3.3 | Prévision des bénéfices financiers |  | 2d | 2023-02-17 | 2023-02-20 | 43 | 0d | Comptable | 14h |
| 45 | 2.4 | Examen et modification des opportunités de l'entreprise |  | 1d | 2023-02-21 | 2023-02-21 | 44 | 0d |  |  |
| 46 | 2.5 | Confirmation de la décision de poursuite du projet | milestone | 0d | 2023-02-21 | 2023-02-21 | 45 | 0d | Conseiller économique; Connaissances; Avocat; Comptable |  |
| 47 | 3 | **Phase 3 - Plan d'action** |  | 21d | 2023-02-22 | 2023-03-22 |  | 0d |  | 161h |
| 48 | 3.1 | **Développement d'un plan d'entreprise quinquennal** |  | 21d | 2023-02-22 | 2023-03-22 |  | 0d |  | 161h |
| 49 | 3.1.1 | Description de la vision et des opportunités |  | 1d | 2023-02-22 | 2023-02-22 | 46 | 0d | Conseiller économique | 7h |
| 50 | 3.1.2 | Liste des hypothèses |  | 1d | 2023-02-23 | 2023-02-23 | 49 | 0d | Conseiller économique | 7h |
| 51 | 3.1.3 | Description du marché |  | 1d | 2023-02-24 | 2023-02-24 | 50 | 0d | Conseiller économique | 7h |
| 52 | 3.1.4 | Description de la nouvelle entreprise |  | 1d | 2023-02-27 | 2023-02-27 | 51 | 0d | Conseiller économique | 7h |
| 53 | 3.1.5 | Description des points forts, points faibles, atouts et menaces |  | 1d | 2023-02-28 | 2023-02-28 | 52 | 0d | Conseiller économique | 7h |
| 54 | 3.1.6 | Estimation du volume de vente pendant la période de démarrage |  | 1d | 2023-03-01 | 2023-03-01 | 53 | 0d | Conseiller économique; Comptable | 14h |
| 55 | 3.1.7 | Prévision des coûts d'exploitation |  | 1d | 2023-03-02 | 2023-03-02 | 54 | 0d | Conseiller économique; Comptable | 14h |
| 56 | 3.1.8 | Établissement d'une stratégie de prix |  | 1d | 2023-03-03 | 2023-03-03 | 55 | 0d | Conseiller économique | 7h |
| 57 | 3.1.9 | Prévision des revenus |  | 1d | 2023-03-06 | 2023-03-06 | 56 | 0d | Conseiller économique | 7h |
| 58 | 3.1.10 | Résumé de la déclaration de trésorerie pro-forma |  | 2d | 2023-03-07 | 2023-03-08 | 57 | 0d | Conseiller économique | 14h |
| 59 | 3.1.11 | Développement de l'analyse de rentabilité |  | 1d | 2023-03-09 | 2023-03-09 | 58 | 0d | Conseiller économique | 7h |
| 60 | 3.1.12 | Développement de la projection de la marge d'autofinancement |  | 1d | 2023-03-10 | 2023-03-10 | 59 | 0d | Conseiller économique | 7h |
| 61 | 3.1.13 | Identification des impératifs de licence et de permis |  | 1d | 2023-03-13 | 2023-03-13 | 60 | 0d | Conseiller économique | 7h |
| 62 | 3.1.14 | Développement du plan de lancement |  | 2d | 2023-03-14 | 2023-03-15 | 61 | 0d | Conseiller économique | 14h |
| 63 | 3.1.15 | Développement de la stratégie de vente et de marketing |  | 1d | 2023-03-16 | 2023-03-16 | 62 | 0d | Conseiller économique | 7h |
| 64 | 3.1.16 | Développement d'une structure de distribution |  | 1d | 2023-03-17 | 2023-03-17 | 63 | 0d | Conseiller économique | 7h |
| 65 | 3.1.17 | Description des risques et des opportunités |  | 2d | 2023-03-20 | 2023-03-21 | 64 | 0d | Conseiller économique | 14h |
| 66 | 3.1.18 | Publication du projet d'entreprise |  | 1d | 2023-03-22 | 2023-03-22 | 65 | 0d | Conseiller économique | 7h |
| 67 | 3.1.19 | Confirmation de la décision de poursuite du projet | milestone | 0d | 2023-03-22 | 2023-03-22 | 66 | 0d | Conseiller économique |  |

| ID | WBS | Task | Type | Duration | Start | Finish | Predecessors | Total slack | Free slack | Resources | Work |
| --- | --- | --- | --- | --- | --- | --- | --- | --- | --- | --- | --- |
| 68 | 4 | **Phase 4 - Exécution du plan de lancement** |  | 53d | 2023-03-23 | 2023-06-05 |  | 0d |  |  | 644h |
| 69 | 4.1 | Choix de l'emplacement |  | 1d | 2023-03-23 | 2023-03-23 | 67 | 0d |  |  |  |
| 70 | 4.2 | **Établissement d'une structure d'entreprise** |  | 24d | 2023-03-24 | 2023-04-26 |  | 0d |  |  | 259h |
| 71 | 4.2.1 | **Choix d'un nom** |  | 2d | 2023-03-24 | 2023-03-27 |  | 0d |  |  | 14h |
| 72 | 4.2.1.1 | Identifications des conséquences |  | 1d | 2023-03-24 | 2023-03-24 | 69 | 0d |  | Avocat | 7h |
| 73 | 4.2.1.2 | Recherche des noms disponibles |  | 1d | 2023-03-27 | 2023-03-27 | 72 | 0d |  | Avocat | 7h |
| 74 | 4.2.2 | **Choix d'une banque** |  | 5d | 2023-03-28 | 2023-04-03 |  | 0d |  |  | 35h |
| 75 | 4.2.2.1 | Établissement des comptes |  | 4d | 2023-03-28 | 2023-03-31 | 73 | 0d |  | Banquier | 28h |
| 76 | 4.2.2.2 | Établissement d'une ligne de crédit |  | 1d | 2023-04-03 | 2023-04-03 | 75 | 0d |  | Banquier | 7h |
| 77 | 4.2.3 | Choix d'une représentation légale |  | 1d | 2023-04-04 | 2023-04-04 | 75SS, 76 | 0d |  | Avocat | 7h |
| 78 | 4.2.4 | Sélection de la catégorie de l'impôt de l'entreprise |  | 2d | 2023-04-05 | 2023-04-06 | 77 | 0d |  | Avocat; Comptable | 28h |
| 79 | 4.2.5 | Choix de la source de financement |  | 2d | 2023-04-07 | 2023-04-10 | 78 | 0d |  | Direction | 14h |
| 80 | 4.2.6 | Engagement du financement | milestone | 0d | 2023-04-10 | 2023-04-10 | 79 | 13d | 0d | Direction |  |
| 81 | 4.2.7 | **Établissement de la base de contrôle des opérations** |  | 12d | 2023-04-11 | 2023-04-26 |  | 13d |  |  | 126h |
| 82 | 4.2.7.1 | Choix et installation du système de comptabilité |  | 2d | 2023-04-11 | 2023-04-12 | 79, 80 | 13d | 0d | Comptable | 14h |
| 83 | 4.2.7.2 | Obtention des licences et permis nécessaires |  | 4d | 2023-04-13 | 2023-04-18 | 82 | 13d | 0d | Avocat; Organisme gouvernemental | 56h |
| 84 | 4.2.7.3 | Obtention des assurances nécessaires |  | 4d | 2023-04-19 | 2023-04-24 | 83 | 13d | 0d | Comptable | 28h |
| 85 | 4.2.7.4 | Établissement du plan de sécurité |  | 2d | 2023-04-25 | 2023-04-26 | 84 | 13d | 0d | Conseiller économique; Avocat | 28h |
| 86 | 4.2.8 | **Développement du programme marketing** |  | 4d | 2023-03-27 | 2023-03-30 |  | 32d |  |  | 35h |
| 87 | 4.2.8.1 | Établissement d'une campagne de publicité |  | 2d | 2023-03-27 | 2023-03-28 | 73SS | 32d | 0d | Conseiller économique | 14h |
| 88 | 4.2.8.2 | Développement d'un logo |  | 1d | 2023-03-29 | 2023-03-29 | 87 | 32d | 0d | Conseiller économique; Avocat | 14h |
| 89 | 4.2.8.3 | Commande des matériaux promotionnels |  | 1d | 2023-03-30 | 2023-03-30 | 88 | 32d | 19d | Conseiller économique | 7h |
| 90 | 4.3 | **Dotation de l'installation physique** |  | 15d | 2023-04-27 | 2023-05-17 |  | 13d |  |  | 105h |
| 91 | 4.3.1 | Réservation du site d'opérations |  | 5d | 2023-04-27 | 2023-05-03 | 85, 89 | 13d | 0d | Avocat | 35h |
| 92 | 4.3.2 | Sélection du matériel du réseau informatique |  | 1d | 2023-05-04 | 2023-05-04 | 91 | 13d | 0d | Services d'informations | 7h |
| 93 | 4.3.3 | Sélection des logiciels informatiques |  | 1d | 2023-05-05 | 2023-05-05 | 92 | 13d | 0d | Services d'informations | 7h |
| 94 | 4.3.4 | Établissement des commodités |  | 3d | 2023-05-08 | 2023-05-10 | 93 | 13d | 0d | Direction | 21h |
| 95 | 4.3.5 | Dotation du mobilier et de l'équipement |  | 4d | 2023-05-11 | 2023-05-16 | 94 | 13d | 0d | Direction | 28h |
| 96 | 4.3.6 | Emménagement |  | 1d | 2023-05-17 | 2023-05-17 | 95 | 13d |  | Direction | 7h |

| ID | WBS | Task | Type | Duration | Start | Finish | Predecessors | Total slack | Resources | Work |
| --- | --- | --- | --- | --- | --- | --- | --- | --- | --- | --- |
| 97 | 4.4 | **Dotation de personnel** |  | 40d | 2023-04-11 | 2023-06-05 |  | 0d |  | 280h |
| 98 | 4.4.1 | Entretien et test des candidats |  | 14d | 2023-04-11 | 2023-04-28 | 79 | 0d | Direction | 98h |
| 99 | 4.4.2 | Embauche du personnel |  | 10d | 2023-05-01 | 2023-05-12 | 98 | 0d | Direction | 70h |
| 100 | 4.4.3 | Formation du personnel |  | 16d | 2023-05-15 | 2023-06-05 | 99 | 0d | Direction | 112h |
| 101 | 4.5 | Lancement de l'entreprise | milestone | 0d | 2023-06-05 | 2023-06-05 | 96, 100 | 0d | Direction |  |
